Schedule from MS Project, 2010-03-15 to 2010-09-30, A marks actual dates.
Ekagra

## Calendars

- Standard: Mon-Fri 08:00-12:00, 13:00-17:00; Sat-Sun off.

## Resources

| Resource |
| --- |
| John Chen |
| Team |
| Ajay Nalamala |
| A |
| Harsh Marwaha |
| Amit Srivastava |
| Amit |
| Santosh Joshi |
| Chen |
| Marwaha |
| Nalamala |
| Joshi |
| Srivastava |
| c |
| Marwaha (6%) |
| caDSR team |
| Systems |
| COPPA Team |
| Hartel |
| v |
| Suite Team |
| NCI Management |
| Conrad |
| McLean |
| Andonyadis |
| Chilukuri |
| Conra |
| J. Chilukuri |
| Dave |

## Schedule

| ID | WBS | Task | Duration | Start | Finish | Predecessors | Complete | Remaining | Total slack | Resources | Work | Actual work |
| --- | --- | --- | --- | --- | --- | --- | --- | --- | --- | --- | --- | --- |
| 1 | 1 | **C3D Clinical Connector 2.2** | 143.5d | 2010-03-15 A | 2010-09-30 |  | 98% | 2.34d | 0d |  | 5616h | 5544h |
| 2 | 1.1 | Finalize Release Scope | 35d | 2010-03-15 A | 2010-04-30 A |  | 100% |  |  | Joshi; Conrad; Andonyadis | 840h | 840h |
| 4 | 1.2 | **Elaboration** | 38d | 2010-05-03 A | 2010-06-23 A |  | 100% |  |  |  | 496h | 496h |
| 5 | 1.2.1 | Create Requirements Document | 20d | 2010-05-03 A | 2010-05-28 A | 2 | 100% |  |  | Conrad | 160h | 160h |
| 6 | 1.2.2 | Review Requirements | 5d | 2010-05-24 A | 2010-05-28 A | 5FS-5d | 100% |  |  | Joshi; J. Chilukuri | 80h | 80h |
| 7 | 1.2.3 | Update Architecture and Design Document | 5d | 2010-05-31 A | 2010-06-04 A | 6 | 100% |  |  | Conrad | 40h | 40h |
| 8 | 1.2.4 | Review Architecture and Design Document | 3d | 2010-06-07 A | 2010-06-09 A | 7 | 100% |  |  | Joshi; Marwaha | 48h | 48h |
| 9 | 1.2.5 | Create Test Plan | 15d | 2010-05-31 A | 2010-06-18 A | 6 | 100% |  |  | J. Chilukuri | 120h | 120h |
| 10 | 1.2.6 | Review Test Plan | 3d | 2010-06-21 A | 2010-06-23 A | 9 | 100% |  |  | Joshi; Conrad | 48h | 48h |
| 12 | 1.3 | **Construction** | 120.5d | 2010-03-15 A | 2010-08-30 |  | 98% | 2.78d | 23d |  | 3624h | 3552h |
| 13 | 1.3.1 | **Month 1** | 35d | 2010-03-15 A | 2010-04-30 A |  | 100% |  |  |  | 984h | 984h |
| 14 | 1.2 | **Security Features Development** | 35d | 2010-03-15 A | 2010-04-30 A |  | 100% |  |  |  | 840h | 840h |
| 15 | 1.2.1 | C3D Study-level Security for C3D Clinical Connector | 35d | 2010-03-15 A | 2010-04-30 A |  | 100% |  |  | Conrad | 280h | 280h |
| 16 | 1.2.2 | Private/Public Study Categorization | 35d | 2010-03-15 A | 2010-04-30 A |  | 100% |  |  | Conrad | 280h | 280h |
| 17 | 1.2.3 | PII Redaction | 35d | 2010-03-15 A | 2010-04-30 A |  | 100% |  |  | Conrad | 280h | 280h |
| 18 | 1.2.5 | **Integration Testing** | 9.5d | 2010-04-19 A | 2010-04-30 A | 14FS-10d | 100% |  |  |  | 144h | 144h |
| 19 | 1.2.5.1 | Execute Smoke Tests and Integration Tests | 9d | 2010-04-19 A | 2010-04-29 A |  | 100% |  |  | Conrad | 72h | 72h |
| 20 | 1.2.5.2 | Participate in Suite Interoperability testing | 9d | 2010-04-19 A | 2010-04-29 A |  | 100% |  |  | Conrad | 72h | 72h |
| 21 | 1.3.1.2.3 | Create QA Milestone Candidate | 0.5d | 2010-04-30 A | 2010-04-30 A | 19, 20 | 100% |  |  |  |  |  |
| 22 | 1.3.2 | **Month 2** | 21d | 2010-05-03 A | 2010-05-31 A |  | 100% |  |  |  | 484h | 484h |
| 23 | 1.4 | **Bug Fixes and CSM Suite Common Security Design** | 21d | 2010-05-03 A | 2010-05-31 A | 13 | 100% |  |  |  | 336h | 336h |
| 24 | 1.4.1 | Bug Fixes | 21d | 2010-05-03 A | 2010-05-31 A |  | 100% |  |  | Conrad | 168h | 168h |
| 25 | 1.4.2 | Upgrade Clinical Connector with CSM 4.2 | 21d | 2010-05-03 A | 2010-05-31 A |  | 100% |  |  | Conrad | 168h | 168h |
| 26 | 1.4.4 | **Integration Testing** | 9.5d | 2010-05-18 A | 2010-05-31 A | 23FS-10d | 100% |  |  |  | 148h | 148h |
| 27 | 1.4.4.1 | Execute Smoke Tests and Integration Tests | 9d | 2010-05-18 A | 2010-05-28 A |  | 100% |  |  | Conrad | 72h | 72h |
| 28 | 1.4.4.2 | Participate in Suite Interoperability testing | 9d | 2010-05-18 A | 2010-05-28 A |  | 100% |  |  | Conrad | 72h | 72h |
| 29 | 1.4.4.3 | Create QA Milestone Candidate | 0.5d | 2010-05-31 A | 2010-05-31 A | 27, 28 | 100% |  |  | Conrad | 4h | 4h |

| ID | WBS | Task | Duration | Start | Finish | Predecessors | Complete | Remaining | Total slack | Free slack | Resources | Work | Actual work |
| --- | --- | --- | --- | --- | --- | --- | --- | --- | --- | --- | --- | --- | --- |
| 30 | 1.3.3 | **Month 3** | 20d | 2010-06-01 A | 2010-06-28 A |  | 100% |  |  |  |  | 468h | 468h |
| 31 | 1.5 | **CSM Suite Common Security Development** | 20d | 2010-06-01 A | 2010-06-28 A | 22 | 100% |  |  |  |  | 320h | 320h |
| 32 | 1.3.3.1.1 | Implement Common Security Roles | 20d | 2010-06-01 A | 2010-06-28 A |  | 100% |  |  |  | Conrad | 160h | 160h |
| 33 | 1.5.1 | Create UI for associating Grid User ID with C3D User ID | 20d | 2010-06-01 A | 2010-06-28 A |  | 100% |  |  |  | Conrad | 160h | 160h |
| 34 | 1.5.2 | **Integration Testing** | 9.5d | 2010-06-15 A | 2010-06-28 A | 31FS-10d | 100% |  |  |  |  | 148h | 148h |
| 35 | 1.5.2.1 | Execute Smoke Tests and Integration Tests | 9d | 2010-06-15 A | 2010-06-25 A |  | 100% |  |  |  | Conrad | 72h | 72h |
| 36 | 1.5.2.2 | Participate in Suite Interoperability testing | 9d | 2010-06-15 A | 2010-06-25 A |  | 100% |  |  |  | Conrad | 72h | 72h |
| 37 | 1.5.2.3 | Create QA Release Candidate | 0.5d | 2010-06-28 A | 2010-06-28 A | 36, 35 | 100% |  |  |  | Conrad | 4h | 4h |
| 38 | 1.3.4 | **Month 4** | 23d | 2010-06-29 A | 2010-07-29 |  | 90% | 2.37d | 44.5d |  |  | 700h | 628h |
| 39 | 1.6 | **Expand Register Subject message, Implement generic CC** | 23d | 2010-06-29 A | 2010-07-29 A | 30 | 100% |  |  |  |  | 552h | 552h |
| 40 | 1.6.1 | Aditional Data Elements for Register Subject | 23d | 2010-06-29 A | 2010-07-29 A |  | 100% |  |  |  | Conrad | 184h | 184h |
| 41 | 1.6.2 | CC Service Standardization Upgrade | 23d | 2010-06-29 A | 2010-07-29 A |  | 100% |  |  |  | Conrad | 184h | 184h |
| 42 | 1.6.3 | Upgrade to BRIDG 3.0 | 23d | 2010-06-29 A | 2010-07-29 A |  | 100% |  |  |  | Conrad | 184h | 184h |
| 43 | 1.6.4 | **Integration Testing** | 9.5d | 2010-07-16 A | 2010-07-29 | 39FS-10d | 51% | 4.62d | 45d |  |  | 148h | 76h |
| 44 | 1.6.4.1 | Execute Smoke Tests and Integration Tests | 9d | 2010-07-16 | 2010-07-28 |  |  |  | 0.5d | 0d | Conrad | 72h |  |
| 45 | 1.6.4.2 | Participate in Suite Interoperability testing | 9d | 2010-07-16 A | 2010-07-28 A |  | 100% |  |  |  | Conrad | 72h | 72h |
| 46 | 1.6.4.3 | Create QA Release Candidate | 0.5d | 2010-07-29 A | 2010-07-29 A | 44, 45 | 100% |  |  |  | Conrad | 4h | 4h |
| 47 | 1.3.5 | **Month 5** | 21.5d | 2010-07-30 A | 2010-08-30 A |  | 100% |  |  |  |  | 988h | 988h |
| 48 | 1.3.5.1 | **Fix AXIS issue related to invoking CC** | 21d | 2010-07-30 A | 2010-08-27 A | 38 | 100% |  |  |  |  | 840h | 840h |
| 49 | 1.3.5.1.1 | Discuss options to fix the Axis issue with the caGrid/SDK team | 21d | 2010-07-30 A | 2010-08-27 A |  | 100% |  |  |  | Conrad; Marwaha; Dave | 504h | 504h |
| 50 | 1.3.5.1.2 | Implement the agreed upon option | 21d | 2010-07-30 A | 2010-08-27 A |  | 100% |  |  |  | Conrad; Marwaha | 336h | 336h |
| 51 | 1.3.5.2 | **Integration Testing** | 9.5d | 2010-08-17 A | 2010-08-30 A | 48FS-9d | 100% |  |  |  |  | 148h | 148h |
| 52 | 1.3.5.2.1 | Execute Smoke Tests and Integration Tests | 9d | 2010-08-17 A | 2010-08-27 A |  | 100% |  |  |  | Conrad | 72h | 72h |
| 53 | 1.3.5.2.2 | Participate in Suite Interoperability testing | 9d | 2010-08-17 A | 2010-08-27 A |  | 100% |  |  |  | Conrad | 72h | 72h |
| 54 | 1.3.5.2.3 | Create Final QA Release Candidate | 0.5d | 2010-08-30 A | 2010-08-30 A | 52, 53 | 100% |  |  |  | Conrad | 4h | 4h |

| ID | WBS | Task | Type | Duration | Start | Finish | Predecessors | Complete | Total slack | Resources | Work | Actual work |
| --- | --- | --- | --- | --- | --- | --- | --- | --- | --- | --- | --- | --- |
| 55 | 1.7 | **Transition** |  | 68d | 2010-06-28 A | 2010-09-30 A |  | 100% |  |  | 656h | 656h |
| 56 | 1.7.1 | Release 2.2 QA Support and Bug Fixes |  | 67d | 2010-06-28 A | 2010-09-29 A | 37 | 100% |  | Conrad | 536h | 536h |
| 57 | 1.4.2 | Wiki Documentation Updates |  | 5d | 2010-09-20 A | 2010-09-27 A | 47FS+15d | 100% |  | Conrad; Joshi | 80h | 80h |
| 58 | 1.7.2 | caBIG Tools Page Update |  | 1d | 2010-09-29 A | 2010-09-30 A | 56 | 100% |  | Conrad; Joshi | 16h | 16h |
| 59 | 1.7.3 | CTMS KC Wiki Update |  | 1d | 2010-09-29 A | 2010-09-30 A | 56 | 100% |  | Conrad; Joshi | 16h | 16h |
| 60 | 1.7.4 | Release Software |  | 1d | 2010-09-29 A | 2010-09-30 A | 56 | 100% |  | Conrad | 8h | 8h |
| 61 | 2 | END C3D Clinical Connector 2.2 | milestone | 0d | 2010-09-30 | 2010-09-30 | 55 |  | 0d |  |  |  |
