# caBIG-Integration-Hub-Project CCTS 3.0 v1

Schedule from MS Project, 2010-10-01 to 2011-04-29, A marks actual dates.
NIH

## Calendars

- Standard: Mon-Fri 08:00-12:00, 13:00-17:00; Sat-Sun off.

## Resources

| Resource |
| --- |
| Nalamala (70%) |
| Nalamala |
| Marwaha |
| Joshi |
| Modi |
| Sutphin |
| BDA team |
| Nalamal |
| Marwahah |
| ESST |
| Chilukuri |
| Dave |
| Suite Application Teams |
| Chen |
| Conrad |
| Akaza |
| Hickerson |
| Hickerosn |
| Andonyadis |
| McLean |

## Schedule

| ID | WBS | Task | Duration | Start | Finish | Predecessors | Complete | Resources | Work | Actual work |
| --- | --- | --- | --- | --- | --- | --- | --- | --- | --- | --- |
| 1 | 1 | **START Suite Release v2.3** | 151d | 2010-10-01 A | 2011-04-29 A |  | 100% |  | 2694.8h | 2694.8h |
| 2 | 1.1 | **Inception** | 50d | 2010-10-01 A | 2010-12-09 A |  | 100% |  | 720h | 720h |
| 3 | 1.1.1 | Determine Scope | 15d | 2010-10-01 A | 2010-10-21 A |  | 100% | Joshi; Marwaha; Nalamala | 360h | 360h |
| 4 | 1.1.2 | Create Schedule and communicate Scope | 15d | 2010-10-08 A | 2010-10-28 A | 3FS-10d | 100% | Joshi | 120h | 120h |
| 5 | 1.1.3 | Receive approval and funding for OpenClinica Clinical Connector | 30d | 2010-10-29 A | 2010-12-09 A | 4 | 100% | Joshi | 240h | 240h |
| 6 | 1.2 | **Elaboration** | 62d | 2010-10-22 A | 2011-01-17 A |  | 100% |  | 456h | 456h |
| 7 | 1.2.1 | **iHub - MirthConnect** | 62d | 2010-10-22 A | 2011-01-17 A |  | 100% |  | 176h | 176h |
| 8 | 1.2.1.1 | Extend Proof of Concept Architecture to test other integration scenarios | 5d | 2010-10-22 A | 2010-10-28 A | 3 | 100% | Nalamala | 40h | 40h |
| 9 | 1.2.1.2 | Finalize technical approach for all integration scenarios | 3d | 2010-10-29 A | 2010-11-02 A | 8 | 100% | Nalamala | 24h | 24h |
| 10 | 1.2.1.3 | Update Requirements and Use Case Document | 3d | 2010-10-29 A | 2010-11-02 A | 8 | 100% | Nalamala; Dave; Joshi | 72h | 72h |
| 11 | 1.2.1.4 | Create Architecture & Design Document | 5d | 2011-01-11 A | 2011-01-17 A | 31 | 100% | Nalamala | 40h | 40h |
| 12 | 1.2.2 | **Suite Installer Enhancements** | 8d | 2010-10-22 A | 2010-11-02 A |  | 100% |  | 176h | 176h |
| 13 | 1.2.2.1 | Interview all stakeholders to understand current painpoints | 3d | 2010-10-22 A | 2010-10-26 A | 3 | 100% | Nalamala; Chen; Dave | 72h | 72h |
| 14 | 1.2.2.2 | Create Requirements based on the interviews | 3d | 2010-10-27 A | 2010-10-29 A | 13 | 100% | Chen; Marwaha; Nalamala | 72h | 72h |
| 15 | 1.2.2.3 | Assign requirements to each team (Suite Installer and Suite Application Teams) | 2d | 2010-11-01 A | 2010-11-02 A | 14 | 100% | Nalamala; Marwaha | 32h | 32h |
| 16 | 1.2.3 | **Clinical Connector - C3D** | 13d | 2010-10-22 A | 2010-11-09 A |  | 100% |  | 104h | 104h |
| 17 | 1.2.3.1 | Update Use Case and Requirements Documents | 10d | 2010-10-22 A | 2010-11-04 A | 3 | 100% | Conrad | 80h | 80h |
| 18 | 1.2.3.2 | Create User Interface Wireframes | 3d | 2010-11-05 A | 2010-11-09 A | 17 | 100% | Conrad | 24h | 24h |
| 19 | 1.3 | **Construction** | 91d | 2010-10-01 A | 2011-02-04 A |  | 100% |  | 914.4h | 914.4h |
| 20 | 1.3.1 | **iHub - MirthConnect** | 53d | 2010-11-03 A | 2011-01-14 A |  | 100% |  | 502.4h | 502.4h |
| 21 | 1.3.1.1 | Study Creation - Broadcast | 5d | 2010-11-03 A | 2010-11-09 A | 10 | 100% | Nalamala | 40h | 40h |
| 22 | 1.3.1.2 | Subject Registration - Broadcast | 5d | 2010-11-10 A | 2010-11-16 A | 21 | 100% | Nalamala | 40h | 40h |
| 23 | 1.3.1.3 | Lab Based Adverse Events | 5d | 2010-11-17 A | 2010-11-23 A | 22 | 100% | Nalamala | 40h | 40h |
| 24 | 1.3.1.4 | Schedule Modification | 5d | 2010-11-24 A | 2010-11-30 A | 23 | 100% | Nalamala | 40h | 40h |
| 25 | 1.3.1.5 | Synchronous invocation of Enterprise Services | 10d | 2010-12-01 A | 2010-12-14 A | 24 | 100% | Nalamala | 80h | 80h |
| 26 | 1.3.1.6 | Basic Exception Handling | 5d | 2010-12-15 A | 2010-12-21 A | 25 | 100% | Nalamala | 40h | 40h |
| 27 | 1.3.1.7 | Postgre Support | 5d | 2010-12-22 A | 2010-12-28 A | 26 | 100% | Nalamala | 40h | 40h |
| 28 | 1.3.1.8 | Clinical Connector clients for C3D and Medidata | 3d | 2011-01-05 A | 2011-01-07 A | 27FS+5d | 100% | Nalamala [60%] | 14.4h | 14.4h |
| 29 | 1.3.1.9 | Transaction Rollback Capability | 5d | 2011-01-10 A | 2011-01-14 A | 28 | 100% | Nalamala [60%] | 24h | 24h |
| 30 | 1.3.1.10 | Update Installation Scripts and make them BDA-compatible | 15d | 2010-11-03 A | 2010-11-23 A | 10 | 100% | Dave | 120h | 120h |
| 31 | 1.3.1.11 | STOP - iHub-MirthConnect to support higher priority caTissue Integration | 1d | 2011-01-10 A | 2011-01-10 A | 28 | 100% | Andonyadis; McLean; Joshi | 24h | 24h |

| ID | WBS | Task | Type | Duration | Start | Finish | Predecessors | Complete | Resources | Work | Actual work |
| --- | --- | --- | --- | --- | --- | --- | --- | --- | --- | --- | --- |
| 32 | 1.3.2 | **iHub - ServiceMix** |  | 1d | 2010-10-01 A | 2010-10-01 A |  | 100% |  | 8h | 8h |
| 33 | 1.3.2.1 | Include AppName and UserName in Audit Logs |  | 1d | 2010-10-01 A | 2010-10-01 A |  | 100% | Marwaha | 8h | 8h |
| 34 | 1.3.3 | **Suite Installer Enhancements** |  | 19d | 2010-11-03 A | 2010-11-29 A |  | 100% |  | 152h | 152h |
| 35 | 1.3.3.1 | Verify Pre-requisites |  | 3d | 2010-11-03 A | 2010-11-05 A | 12 | 100% | Marwaha | 24h | 24h |
| 36 | 1.3.3.2 | Property Files Consolidation |  | 3d | 2010-11-08 A | 2010-11-10 A | 35 | 100% | Marwaha | 24h | 24h |
| 37 | 1.3.3.3 | Incorporate changes for iHub-MirthConnect |  | 3d | 2010-11-11 A | 2010-11-15 A | 36 | 100% | Marwaha | 24h | 24h |
| 38 | 1.3.3.4 | WebSSO installation enhancements |  | 5d | 2010-11-16 A | 2010-11-22 A | 37 | 100% | Marwaha | 40h | 40h |
| 39 | 1.3.3.5 | Documentation Updates to correct and clarify instructions |  | 5d | 2010-11-23 A | 2010-11-29 A | 38 | 100% | Marwaha | 40h | 40h |
| 40 | 1.3.4 | **Clinical Connector - C3D** |  | 63d | 2010-11-10 A | 2011-02-04 A |  | 100% |  | 252h | 252h |
| 41 | 1.3.4.1 | Administrator UI |  | 10d | 2010-11-10 A | 2010-11-23 A | 16 | 100% | Conrad [50%] | 40h | 40h |
| 42 | 1.3.4.2 | Move Service Properties from File to Database |  | 6d | 2010-11-24 A | 2010-12-01 A | 41 | 100% | Conrad [50%] | 24h | 24h |
| 43 | 1.3.4.3 | Two new outbound data operations |  | 10d | 2010-12-02 A | 2010-12-15 A | 42 | 100% | Conrad [50%] | 40h | 40h |
| 44 | 1.3.4.4 | Security features for new operations |  | 6d | 2010-12-16 A | 2010-12-23 A | 43 | 100% | Conrad [50%] | 24h | 24h |
| 45 | 1.3.4.5 | BDAfication of Admin UI Installation script |  | 6d | 2010-12-24 A | 2010-12-31 A | 44 | 100% | Conrad [50%] | 24h | 24h |
| 46 | 1.3.4.6 | Admin UI - Value Set bindings and Data validation checks |  | 10d | 2011-01-03 A | 2011-01-14 A | 45 | 100% | Conrad [50%] | 40h | 40h |
| 47 | 1.3.4.7 | Study ID Translation |  | 10d | 2011-01-17 A | 2011-01-28 A | 46 | 100% | Conrad [50%] | 40h | 40h |
| 48 | 1.3.4.8 | BDAfication of all Database scripts |  | 5d | 2011-01-31 A | 2011-02-04 A | 47 | 100% | Conrad [50%] | 20h | 20h |
| 49 | 1.4 | **Transition** |  | 60d | 2011-02-07 A | 2011-04-29 A |  | 100% |  | 604.4h | 604.4h |
| 50 | 1.4.1 | QA Support, Bug Fixes, Suite Interoperability Support |  | 60d | 2011-02-07 A | 2011-04-29 A | 19 | 100% | Marwaha [25%]; Nalamala [25%]; Conrad [50%] | 480h | 480h |
| 51 | 1.4.2 | Documentation and Wiki Updates |  | 30d | 2011-02-07 A | 2011-03-18 A | 19 | 100% | Marwaha [15%]; Nalamala [15%]; Conrad [25%] | 120h | 120h |
| 52 | 1.4.3 | Deployment Support |  | 1d | 2011-04-29 A | 2011-04-29 A | 50FS-1d | 100% | Marwaha [15%]; Nalamala [15%]; Conrad [25%] | 4.4h | 4.4h |
| 53 | 2 | END Suite Release v2.3 | milestone | 0d | 2011-04-29 A | 2011-04-29 A | 52 | 100% |  |  |  |
